# FT Project

Schedule from MS Project, 2011-12-05 to 2013-03-01.
Broadcom Corporation

## Calendars

- Standard: Mon-Fri 08:00-12:00, 13:00-17:00; Sat-Sun off.

## Schedule

| ID | WBS | Task | Type | Duration | Start | Finish | Predecessors | Total slack | Free slack | Constraint |
| --- | --- | --- | --- | --- | --- | --- | --- | --- | --- | --- |
| 1 | 1 | **Face Tarcking** |  | 324d | 2011-12-05 | 2013-03-01 |  | 0d |  |  |
| 2 | 1.1 | **VC5 time line** |  | 261d | 2012-03-01 | 2013-03-01 |  | 0d |  |  |
| 3 | 1.1.1 | SW Sim ready | milestone | 0d | 2012-03-01 | 2012-03-01 |  | 261d |  | start no earlier than 2012-03-01 |
| 4 | 1.1.2 | ChipIt system ready for debug | milestone | 0d | 2012-06-01 | 2012-06-01 |  | 135d | 6d | start no earlier than 2012-06-01 |
| 5 | 1.1.3 | Feature freez? | milestone | 0d | 2012-09-03 | 2012-09-03 |  | 69d | 0d | start no earlier than 2012-09-03 |
| 6 | 1.1.4 | A0 Design Freez | milestone | 0d | 2012-12-31 | 2012-12-31 |  | 44d | 0d | start no earlier than 2012-12-31 |
| 7 | 1.1.5 | A0 Tapeout | milestone | 0d | 2013-03-01 | 2013-03-01 |  | 0d |  | start no earlier than 2013-03-01 |
| 8 | 1.2 | **RTL** |  | 280d | 2011-12-05 | 2012-12-31 |  | 44d |  |  |
| 9 | 1.2.1 | **Current algo implementation** |  | 280d | 2011-12-05 | 2012-12-31 |  | 44d |  |  |
| 10 | 1.2.1.1 | Bringup of current design |  | 1mo | 2011-12-05 | 2011-12-30 |  | 64d | 0d | start no earlier than 2011-12-05 |
| 11 | 1.2.1.2 | C Simulator (pipeline) |  | 2mo | 2012-01-02 | 2012-02-24 | 10 | 64d | 0d | start no earlier than 2012-01-02 |
| 12 | 1.2.1.3 | System Integration and initial synthesis |  | 2mo | 2012-01-02 | 2012-02-24 |  | 64d | 0d | start no earlier than 2012-01-02 |
| 13 | 1.2.1.4 | FPGA implementation |  | 2mo | 2012-02-27 | 2012-04-20 | 12 | 164d |  |  |
| 14 | 1.2.1.5 | VC4 feasability - VPU -HW sim part working |  | 3w | 2012-01-02 | 2012-01-20 |  | 229d | 25d | start no earlier than 2012-01-01 |
| 15 | 1.2.1.6 | VC4 VPU Validation ? |  | 3mo | 2012-02-27 | 2012-05-18 | 12, 14 | 204d |  |  |
| 16 | 1.2.1.7 | Perormance testing and improvement |  | 3mo | 2012-06-11 | 2012-09-03 | 4, 5FF, 13 | 129d |  |  |
| 17 | 1.2.1.8 | System design support |  | 1mo | 2012-12-03 | 2012-12-31 | 5, 6FF | 44d |  |  |
| 18 | 1.2.2 | **Improved Algo** |  | 60d | 2012-09-03 | 2012-11-23 | 5 | 69d |  |  |
| 19 | 1.2.2.1 | New features |  | 3mo | 2012-09-03 | 2012-11-23 |  | 69d |  |  |
| 20 | 1.3 | **SW Driver** |  | 200d | 2012-01-02 | 2012-10-05 |  | 104d |  |  |
| 21 | 1.3.1 | Converting current SW to VC C ( high level single frame decision making) |  | 2mo | 2012-01-02 | 2012-02-24 |  | 264d |  | start no earlier than 2012-01-02 |
| 22 | 1.3.2 | LL driver ( connection to C SIm) |  | 1mo | 2012-02-27 | 2012-03-23 | 11, 12 | 64d | 0d |  |
| 23 | 1.3.3 | Simulator testing |  | 1mo | 2012-03-26 | 2012-04-20 | 22 | 64d | 0d |  |
| 24 | 1.3.4 | Perormance testing |  | 3mo | 2012-04-23 | 2012-07-13 | 23, 36 | 64d | 0d |  |
| 25 | 1.3.5 | High level Video rate decision making |  | 3mo | 2012-07-16 | 2012-10-05 | 24, 30 | 104d |  |  |

| ID | WBS | Task | Duration | Start | Finish | Predecessors | Total slack | Free slack | Constraint |
| --- | --- | --- | --- | --- | --- | --- | --- | --- | --- |
| 26 | 1.4 | **Improved Algo** | 100d | 2012-07-16 | 2012-11-30 | 24 | 64d |  |  |
| 27 | 1.4.1 | New Training process ( Profile detection?) | 4mo | 2012-07-16 | 2012-11-02 |  | 64d | 0d |  |
| 28 | 1.4.2 | New Features | 4mo | 2012-08-13 | 2012-11-30 | 27SS+1mo | 64d |  |  |
| 29 | 1.5 | **High Res SW** | 240d | 2012-01-02 | 2012-11-30 |  | 64d |  |  |
| 30 | 1.5.1 | High Res Face feaures | 4mo | 2012-01-02 | 2012-04-20 |  | 64d | 0d | start no earlier than 2012-01-02 |
| 31 | 1.5.2 | High Res Smile | 4mo | 2012-04-23 | 2012-08-10 | 30 | 64d | 0d |  |
| 32 | 1.5.3 | High Res Blink | 4mo | 2012-08-13 | 2012-11-30 | 31 | 64d |  |  |
| 33 | 1.6 | **Face DB** | 60d | 2012-01-02 | 2012-03-23 |  | 84d |  |  |
| 34 | 1.6.1 | DB Collection | 1mo | 2012-01-02 | 2012-01-27 |  | 84d | 0d | start no earlier than 2012-01-02 |
| 35 | 1.6.2 | DB Management tools | 1mo | 2012-01-30 | 2012-02-24 | 34 | 84d | 0d |  |
| 36 | 1.6.3 | Autumatic testing tools | 1mo | 2012-02-27 | 2012-03-23 | 35 | 84d | 20d |  |
